# MBAWA_001_DiagramaDeGantt_001 (1)

Schedule from MS Project, 2016-05-28 to 2016-06-30, costs in $.

## Calendars

- Estándar: Mon-Sat 09:00-13:00, 15:00-19:00; Sun off.

## Resources

| Resource | Rate |
| --- | --- |
| Administrador del proyecto | 98.45 |
| Analista | 91.28 |
| Programador | 64.35 |
| Diseñador | 52.03 |
| Asegurador de la calidad | 73.07 |
| Administrador de la configuración | 78.57 |
| Téster | 70.8 |

## Schedule

| ID | WBS | Task | Type | Duration | Start | Finish | Predecessors | Total slack | Constraint | Resources | Work | Cost |
| --- | --- | --- | --- | --- | --- | --- | --- | --- | --- | --- | --- | --- |
| 1 | 1 | **PLAN PRELIMINAR** |  | 1d | 2016-05-28 09:00 | 2016-05-28 19:00 |  | 0d |  |  | 8h | 787.6 |
| 2 | 1.1 | Generar WBS del producto inicial |  | 1h | 2016-05-28 09:00 | 2016-05-28 10:00 |  | 0d |  | Administrador del proyecto | 1h | 98.45 |
| 3 | 1.2 | 1.2 Generar el Project Chárter |  | 1h | 2016-05-28 10:00 | 2016-05-28 11:00 | 2 | 0d |  | Administrador del proyecto | 1h | 98.45 |
| 4 | 1.3 | Plan Preliminar del proyecto |  | 6h | 2016-05-28 11:00 | 2016-05-28 19:00 | 3 | 0d |  | Administrador del proyecto | 6h | 590.7 |
| 5 | 2 | **NOMBRE DEL PROYECTO** |  | 27.6d | 2016-05-30 09:00 | 2016-06-30 15:48 | 1 | 0d |  |  | 214.8h | 16,452.28 |
| 6 | 2.1 | Formación del equipo |  | 1h | 2016-05-30 09:00 | 2016-05-30 10:00 |  | 0d | start no earlier than 2016-05-03 09:00 | Administrador del proyecto | 1h | 98.45 |
| 7 | 2.2 | **Análisis** |  | 6.5d | 2016-05-30 10:00 | 2016-06-06 16:00 | 6 | 0d |  |  | 52h | 4,659.22 |
| 8 | 2.2.1 | **Elicitación** |  | 2.44d | 2016-05-30 10:00 | 2016-06-01 15:30 |  | 0d |  |  | 19.5h | 1,779.96 |
| 9 | 2.2.1.1 | Generar lista de proveedores |  | 0.5h | 2016-05-30 10:00 | 2016-05-30 10:30 | 6 | 0d |  | Analista | 0.5h | 45.64 |
| 10 | 2.2.1.2 | Evaluar proveedores de requerimientos |  | 0.5h | 2016-05-30 10:30 | 2016-05-30 11:00 | 9 | 0d |  | Analista | 0.5h | 45.64 |
| 11 | 2.2.1.3 | Definir estrategia de recolección de datos |  | 0.5h | 2016-05-30 11:00 | 2016-05-30 11:30 | 10 | 0d |  | Analista | 0.5h | 45.64 |
| 12 | 2.2.1.4 | Planificación de reuniones de Licitación |  | 2h | 2016-05-30 11:30 | 2016-05-30 15:30 | 11 | 0d |  | Analista | 2h | 182.56 |
| 13 | 2.2.1.5 | Identificación Procesos del sistema |  | 8h | 2016-05-30 15:30 | 2016-05-31 15:30 | 12 | 0d |  | Analista | 8h | 730.24 |
| 14 | 2.2.1.6 | Identificar Requerimientos Funcionales |  | 6h | 2016-05-31 15:30 | 2016-06-01 11:30 | 13 | 0d |  | Analista | 6h | 547.68 |
| 15 | 2.2.1.7 | Identificar Requerimientos No Funcionales |  | 2h | 2016-06-01 11:30 | 2016-06-01 15:30 | 14 | 0d |  | Analista | 2h | 182.56 |
| 16 | 2.2.2 | **Especificación** |  | 2.38d | 2016-06-01 15:30 | 2016-06-03 18:30 | 8 | 0d |  |  | 19h | 1,734.32 |
| 17 | 2.2.2.1 | Evaluación de los requerimientos |  | 3h | 2016-06-01 15:30 | 2016-06-01 18:30 | 15 | 0d |  | Analista | 3h | 273.84 |
| 18 | 2.2.2.2 | SRS |  | 16h | 2016-06-01 18:30 | 2016-06-03 18:30 | 17 | 0d |  | Analista | 16h | 1,460.48 |
| 19 | 2.2.3 | **Gestión de Requerimientos** |  | 0.69d | 2016-06-03 18:30 | 2016-06-04 16:00 |  | 0d |  |  | 5.5h | 516.38 |
| 20 | 2.2.3.1 | Priorizar los Requerimientos |  | 1h | 2016-06-03 18:30 | 2016-06-04 09:30 | 18 | 0d |  | Analista | 1h | 91.28 |
| 21 | 2.2.3.2 | Almacenar en repositorio |  | 0.5h | 2016-06-04 09:30 | 2016-06-04 10:00 | 20 | 0d |  | Analista | 0.5h | 45.64 |
| 22 | 2.2.3.3 | Asignar a los desarrolladores de software |  | 2h | 2016-06-04 10:00 | 2016-06-04 12:00 | 21 | 0d |  | Administrador del proyecto | 2h | 196.9 |
| 23 | 2.2.3.4 | Administración de cambios de requerimientos |  | 1h | 2016-06-04 12:00 | 2016-06-04 13:00 | 22 | 0d |  | Analista | 1h | 91.28 |
| 24 | 2.2.3.5 | Administración de la trazabilidad de requerimientos |  | 1h | 2016-06-04 15:00 | 2016-06-04 16:00 | 23 | 0d |  | Analista | 1h | 91.28 |
| 25 | 2.2.4 | Validación y verificación de análisis |  | 8h | 2016-06-04 16:00 | 2016-06-06 16:00 | 24 | 0d | start no earlier than 2016-05-10 09:00 | Administrador de la configuración | 8h | 628.56 |
| 26 | 2.2.5 | Milestones Fase Análisis | milestone | 0d | 2016-05-30 10:00 | 2016-05-30 10:00 |  | 6.5d | start no earlier than 2016-05-10 09:00 |  |  |  |

| ID | WBS | Task | Type | Duration | Start | Finish | Predecessors | Total slack | Free slack | Constraint | Resources | Work | Cost |
| --- | --- | --- | --- | --- | --- | --- | --- | --- | --- | --- | --- | --- | --- |
| 27 | 2.3 | **Planificación** |  | 2.12d | 2016-06-06 16:00 | 2016-06-08 17:00 | 7 | 0d |  |  |  | 16h | 1,376.32 |
| 28 | 2.3.1 | Definición del ciclo de vida |  | 0.5h | 2016-06-06 16:00 | 2016-06-06 16:30 | 26 | 0d |  |  | Analista | 0.5h | 45.64 |
| 29 | 2.3.2 | Definición de políticas |  | 0.5h | 2016-06-06 16:30 | 2016-06-06 17:00 | 28 | 0d |  |  | Administrador del proyecto | 0.5h | 49.23 |
| 30 | 2.3.3 | Actualizar plan de proyecto |  | 1h | 2016-06-06 17:00 | 2016-06-06 18:00 | 29 | 0d |  |  | Administrador del proyecto | 1h | 98.45 |
| 31 | 2.3.4 | **Estimación** |  | 0.62d | 2016-06-06 18:00 | 2016-06-07 13:00 |  | 0d |  |  |  | 3h | 273.84 |
| 32 | 2.3.4.1 | Actualizar WBS/Calendario |  | 1h | 2016-06-06 18:00 | 2016-06-06 19:00 | 30 | 0d |  |  |  |  |  |
| 33 | 2.3.4.2 | Diccionario del WBS |  | 3h | 2016-06-07 09:00 | 2016-06-07 12:00 | 32 | 0d |  |  | Analista | 3h | 273.84 |
| 34 | 2.3.4.3 | Costos |  | 1h | 2016-06-07 12:00 | 2016-06-07 13:00 | 33 | 0d |  |  |  |  |  |
| 35 | 2.3.5 | **Riesgos** |  | 0.88d | 2016-06-07 15:00 | 2016-06-08 12:00 |  | 0d |  |  |  | 8h | 664.57 |
| 36 | 2.3.5.1 | Identificación de riesgos |  | 2h | 2016-06-07 15:00 | 2016-06-07 17:00 | 34 | 0d |  |  | Analista | 2h | 182.56 |
| 37 | 2.3.5.2 | Asignación de prioridades |  | 1h | 2016-06-07 17:00 | 2016-06-07 18:00 | 36 | 0d |  |  | Administrador del proyecto; Analista | 2h | 189.73 |
| 38 | 2.3.5.3 | Plan de mitigación y contingencia |  | 4h | 2016-06-07 18:00 | 2016-06-08 12:00 | 37 | 0d |  |  | Asegurador de la calidad | 4h | 292.28 |
| 39 | 2.3.6 | **Aseguramiento de la calidad** |  | 0.38d | 2016-06-08 12:00 | 2016-06-08 17:00 |  | 0d |  |  |  | 3h | 244.59 |
| 40 | 2.3.6.1 | Plan de gestión de la configuración |  | 2h | 2016-06-08 12:00 | 2016-06-08 16:00 | 38 | 0d |  | finish no earlier than 2016-05-12 19:00 | Asegurador de la calidad | 2h | 146.14 |
| 41 | 2.3.6.2 | Junta de arranque de construcción |  | 1h | 2016-06-08 16:00 | 2016-06-08 17:00 | 40 | 0d |  | start no earlier than 2016-05-12 09:00 | Administrador del proyecto | 1h | 98.45 |
| 42 | 2.3.7 | Milestones Fase Planificación | milestone | 0d | 2016-06-08 17:00 | 2016-06-08 17:00 | 41 | 0d |  |  |  |  |  |
| 43 | 2.4 | **Diseño** |  | 3.38d | 2016-06-08 17:00 | 2016-06-13 10:00 | 27 | 0d |  |  |  | 23h | 1,329.39 |
| 44 | 2.4.1 | **Diagramas UML** |  | 1.25d | 2016-06-08 17:00 | 2016-06-09 19:00 | 39 | 0d |  |  |  | 10h | 520.3 |
| 45 | 2.4.1.1 | Diagramas de casos de uso |  | 2h | 2016-06-08 17:00 | 2016-06-08 19:00 | 42 | 0d |  |  | Diseñador | 2h | 104.06 |
| 46 | 2.4.1.2 | Diagrama de secuencia |  | 2h | 2016-06-09 09:00 | 2016-06-09 11:00 | 45 | 0d |  |  | Diseñador | 2h | 104.06 |
| 47 | 2.4.1.3 | Diagrama de clases |  | 2h | 2016-06-09 11:00 | 2016-06-09 13:00 | 46 | 0d |  |  | Diseñador | 2h | 104.06 |
| 48 | 2.4.1.4 | Diagrama de componentes |  | 2h | 2016-06-09 15:00 | 2016-06-09 17:00 | 47 | 0d |  |  | Diseñador | 2h | 104.06 |
| 49 | 2.4.1.5 | Diagrama de despliegue |  | 2h | 2016-06-09 17:00 | 2016-06-09 19:00 | 48 | 0d |  |  | Diseñador | 2h | 104.06 |
| 50 | 2.4.2 | Mapa de navegación |  | 2h | 2016-06-10 09:00 | 2016-06-10 11:00 | 49 | 1.62d | 0d |  | Diseñador | 2h | 104.06 |
| 51 | 2.4.3 | Maquetación (bocetos) |  | 2h | 2016-06-10 11:00 | 2016-06-10 13:00 | 50 | 1.62d |  |  | Diseñador | 2h | 104.06 |

| ID | WBS | Task | Duration | Start | Finish | Predecessors | Total slack | Resources | Work | Cost |
| --- | --- | --- | --- | --- | --- | --- | --- | --- | --- | --- |
| 52 | 2.4.4 | **Diseño de Diagramas de la base de datos** | 0.5d | 2016-06-10 09:00 | 2016-06-10 13:00 | 44 | 0d |  | 4h | 208.12 |
| 53 | 2.4.4.1 | Diagrama E-R | 2h | 2016-06-10 09:00 | 2016-06-10 11:00 |  | 0d | Diseñador | 2h | 104.06 |
| 54 | 2.4.4.2 | Diagrama Relacional | 2h | 2016-06-10 11:00 | 2016-06-10 13:00 | 53 | 0d | Diseñador | 2h | 104.06 |
| 55 | 2.4.5 | Verificación y Validación de diseño | 5h | 2016-06-10 15:00 | 2016-06-11 10:00 | 52 | 0d | Administrador de la configuración | 5h | 392.85 |
| 56 | 2.4.6 | Milestones Fase de diseño | 1d | 2016-06-11 10:00 | 2016-06-13 10:00 | 55 | 0d |  |  |  |
| 57 | 2.5 | **Codificación** | 10.97d | 2016-06-13 10:00 | 2016-06-25 09:48 | 43 | 0d |  | 87.8h | 5,907.93 |
| 58 | 2.5.1 | Codificación de la base de datos | 4h | 2016-06-13 10:00 | 2016-06-13 16:00 | 56 | 0d | Programador | 4h | 257.4 |
| 59 | 2.5.2 | **Modulo Usuarios** | 1.32d | 2016-06-13 16:00 | 2016-06-14 18:36 | 58 | 0d |  | 10.6h | 682.11 |
| 60 | 2.5.2.1 | Interfaz | 2h | 2016-06-13 16:00 | 2016-06-13 18:00 | 58 | 0d | Programador | 2h | 128.7 |
| 61 | 2.5.2.2 | Clases de Usuario | 6h | 2016-06-13 18:00 | 2016-06-14 16:00 | 60 | 0d | Programador | 6h | 386.1 |
| 62 | 2.5.2.3 | Conexión a la base de datos | 0.5h | 2016-06-14 16:00 | 2016-06-14 16:30 | 61 | 0d | Programador | 0.5h | 32.17 |
| 63 | 2.5.2.4 | Alta de usuarios | 0.2h | 2016-06-14 16:30 | 2016-06-14 16:42 | 62 | 0d | Programador | 0.2h | 12.87 |
| 64 | 2.5.2.5 | Baja de usuarios | 0.2h | 2016-06-14 16:42 | 2016-06-14 16:54 | 63 | 0d | Programador | 0.2h | 12.87 |
| 65 | 2.5.2.6 | Actualización de Usuarios | 0.2h | 2016-06-14 16:54 | 2016-06-14 17:06 | 64 | 0d | Programador | 0.2h | 12.87 |
| 66 | 2.5.2.7 | Consulta de usuarios | 0.5h | 2016-06-14 17:06 | 2016-06-14 17:36 | 65 | 0d | Programador | 0.5h | 32.17 |
| 67 | 2.5.2.8 | Reporte de usuarios | 1h | 2016-06-14 17:36 | 2016-06-14 18:36 | 66 | 0d | Programador | 1h | 64.35 |
| 68 | 2.5.3 | **Modulo de Productos** | 1.32d | 2016-06-14 18:36 | 2016-06-16 11:12 | 59 | 0d |  | 10.6h | 682.11 |
| 69 | 2.5.3.1 | Interfaz | 2h | 2016-06-14 18:36 | 2016-06-15 10:36 | 67 | 0d | Programador | 2h | 128.7 |
| 70 | 2.5.3.2 | Clases de productos | 6h | 2016-06-15 10:36 | 2016-06-15 18:36 | 69 | 0d | Programador | 6h | 386.1 |
| 71 | 2.5.3.3 | Conexión a la base de datos | 0.5h | 2016-06-15 18:36 | 2016-06-16 09:06 | 70 | 0d | Programador | 0.5h | 32.17 |
| 72 | 2.5.3.4 | Alta de productos | 0.2h | 2016-06-16 09:06 | 2016-06-16 09:18 | 71 | 0d | Programador | 0.2h | 12.87 |
| 73 | 2.5.3.5 | Baja de productos | 0.2h | 2016-06-16 09:18 | 2016-06-16 09:30 | 72 | 0d | Programador | 0.2h | 12.87 |
| 74 | 2.5.3.6 | Actualización de productos | 0.2h | 2016-06-16 09:30 | 2016-06-16 09:42 | 73 | 0d | Programador | 0.2h | 12.87 |
| 75 | 2.5.3.7 | Consulta de productos | 0.5h | 2016-06-16 09:42 | 2016-06-16 10:12 | 74 | 0d | Programador | 0.5h | 32.17 |
| 76 | 2.5.3.8 | Reporte de productos | 1h | 2016-06-16 10:12 | 2016-06-16 11:12 | 75 | 0d | Programador | 1h | 64.35 |

| ID | WBS | Task | Duration | Start | Finish | Predecessors | Total slack | Resources | Work | Cost |
| --- | --- | --- | --- | --- | --- | --- | --- | --- | --- | --- |
| 77 | 2.5.4 | **Modulo de entradas** | 1.29d | 2016-06-16 11:12 | 2016-06-17 15:30 | 68 | 0d |  | 10.3h | 662.8 |
| 78 | 2.5.4.1 | Interfaz | 2h | 2016-06-16 11:12 | 2016-06-16 15:12 | 76 | 0d | Programador | 2h | 128.7 |
| 79 | 2.5.4.2 | Clases de entradas | 6h | 2016-06-16 15:12 | 2016-06-17 11:12 | 78 | 0d | Programador | 6h | 386.1 |
| 80 | 2.5.4.3 | Conexión a la base de datos | 0.5h | 2016-06-17 11:12 | 2016-06-17 11:42 | 79 | 0d | Programador | 0.5h | 32.17 |
| 81 | 2.5.4.4 | Alta de entradas | 0.2h | 2016-06-17 11:42 | 2016-06-17 11:54 | 80 | 0d | Programador | 0.2h | 12.87 |
| 82 | 2.5.4.5 | Baja de entradas | 0.2h | 2016-06-17 11:54 | 2016-06-17 12:06 | 81 | 0d | Programador | 0.2h | 12.87 |
| 83 | 2.5.4.6 | Actualización de entradas | 0.2h | 2016-06-17 12:06 | 2016-06-17 12:18 | 82 | 0d | Programador | 0.2h | 12.87 |
| 84 | 2.5.4.7 | Consulta de entradas | 0.2h | 2016-06-17 12:18 | 2016-06-17 12:30 | 83 | 0d | Programador | 0.2h | 12.87 |
| 85 | 2.5.4.8 | Reporte de entradas | 1h | 2016-06-17 12:30 | 2016-06-17 15:30 | 84 | 0d | Programador | 1h | 64.35 |
| 86 | 2.5.5 | **Modulo de Salidas** | 1.29d | 2016-06-17 15:30 | 2016-06-18 17:48 | 77 | 0d |  | 10.3h | 662.8 |
| 87 | 2.5.5.1 | Interfaz | 2h | 2016-06-17 15:30 | 2016-06-17 17:30 | 85 | 0d | Programador | 2h | 128.7 |
| 88 | 2.5.5.2 | Clases de Salidas | 6h | 2016-06-17 17:30 | 2016-06-18 15:30 | 87 | 0d | Programador | 6h | 386.1 |
| 89 | 2.5.5.3 | Conexión a la Base de Datos | 0.5h | 2016-06-18 15:30 | 2016-06-18 16:00 | 88 | 0d | Programador | 0.5h | 32.17 |
| 90 | 2.5.5.4 | Alta de Salidas | 0.2h | 2016-06-18 16:00 | 2016-06-18 16:12 | 89 | 0d | Programador | 0.2h | 12.87 |
| 91 | 2.5.5.5 | Baja de salidas | 0.2h | 2016-06-18 16:12 | 2016-06-18 16:24 | 90 | 0d | Programador | 0.2h | 12.87 |
| 92 | 2.5.5.6 | Actualización de salidas | 0.2h | 2016-06-18 16:24 | 2016-06-18 16:36 | 91 | 0d | Programador | 0.2h | 12.87 |
| 93 | 2.5.5.7 | Consulta de salidas | 0.2h | 2016-06-18 16:36 | 2016-06-18 16:48 | 92 | 0d | Programador | 0.2h | 12.87 |
| 94 | 2.5.5.8 | Reporte de salidas | 1h | 2016-06-18 16:48 | 2016-06-18 17:48 | 93 | 0d | Programador | 1h | 64.35 |
| 95 | 2.5.6 | **Modulo de Login** | 0.25d | 2016-06-18 17:48 | 2016-06-20 09:48 | 86 | 0d |  | 2h | 128.7 |
| 96 | 2.5.6.1 | Interfaz | 1h | 2016-06-18 17:48 | 2016-06-18 18:48 | 94 | 0d | Programador | 1h | 64.35 |
| 97 | 2.5.6.2 | Conexión a la Base de Datos | 0.5h | 2016-06-18 18:48 | 2016-06-20 09:18 | 96 | 0d | Programador | 0.5h | 32.17 |
| 98 | 2.5.6.3 | Verificación de datos | 0.5h | 2016-06-20 09:18 | 2016-06-20 09:48 | 97 | 0d | Programador | 0.5h | 32.17 |
| 99 | 2.6 | **Pruebas** | 5d | 2016-06-20 09:48 | 2016-06-25 09:48 | 95 | 0d |  | 40h | 2,832 |
| 100 | 2.6.1 | **Pruebas de caja blanca** | 5d | 2016-06-20 09:48 | 2016-06-25 09:48 |  | 0d |  | 40h | 2,832 |
| 101 | 2.6.1.1 | **Modulo de Usuarios** | 1d | 2016-06-20 09:48 | 2016-06-21 09:48 |  | 0d |  | 8h | 566.4 |
| 102 | 2.6.1.1.1 | Pruebas de Modulo | 4h | 2016-06-20 09:48 | 2016-06-20 15:48 | 98 | 0d | Téster | 4h | 283.2 |
| 103 | 2.6.1.1.2 | Pruebas Unitarias | 4h | 2016-06-20 15:48 | 2016-06-21 09:48 | 102 | 0d | Téster | 4h | 283.2 |

| ID | WBS | Task | Type | Duration | Start | Finish | Predecessors | Total slack | Resources | Work | Cost |
| --- | --- | --- | --- | --- | --- | --- | --- | --- | --- | --- | --- |
| 104 | 2.6.1.2 | **Modulo de Productos** |  | 1d | 2016-06-21 09:48 | 2016-06-22 09:48 | 101 | 0d |  | 8h | 566.4 |
| 105 | 2.6.1.2.1 | Pruebas unitarias |  | 4h | 2016-06-21 09:48 | 2016-06-21 15:48 | 103 | 0d | Téster | 4h | 283.2 |
| 106 | 2.6.1.2.2 | Pruebas de modulo |  | 4h | 2016-06-21 15:48 | 2016-06-22 09:48 | 105 | 0d | Téster | 4h | 283.2 |
| 107 | 2.6.1.3 | **Modulo de Entradas** |  | 1d | 2016-06-22 09:48 | 2016-06-23 09:48 | 104 | 0d |  | 8h | 566.4 |
| 108 | 2.6.1.3.1 | Pruebas unitarias |  | 4h | 2016-06-22 09:48 | 2016-06-22 15:48 | 106 | 0d | Téster | 4h | 283.2 |
| 109 | 2.6.1.3.2 | Pruebas de modulo |  | 4h | 2016-06-22 15:48 | 2016-06-23 09:48 | 108 | 0d | Téster | 4h | 283.2 |
| 110 | 2.6.1.4 | **Modulo de Salidas** |  | 1d | 2016-06-23 09:48 | 2016-06-24 09:48 | 107 | 0d |  | 8h | 566.4 |
| 111 | 2.6.1.4.1 | Pruebas unitarias |  | 4h | 2016-06-23 09:48 | 2016-06-23 15:48 | 109 | 0d | Téster | 4h | 283.2 |
| 112 | 2.6.1.4.2 | Pruebas de modulo |  | 4h | 2016-06-23 15:48 | 2016-06-24 09:48 | 111 | 0d | Téster | 4h | 283.2 |
| 113 | 2.6.1.5 | **Login** |  | 1d | 2016-06-24 09:48 | 2016-06-25 09:48 |  | 0d |  | 8h | 566.4 |
| 114 | 2.6.1.5.1 | Pruebas unitarias |  | 4h | 2016-06-24 09:48 | 2016-06-24 15:48 | 112 | 0d | Téster | 4h | 283.2 |
| 115 | 2.6.1.5.2 | Pruebas de modulo |  | 4h | 2016-06-24 15:48 | 2016-06-25 09:48 | 114 | 0d | Téster | 4h | 283.2 |
| 116 | 2.6.2 | Milestones fase de Codificación | milestone | 0d | 2016-06-25 09:48 | 2016-06-25 09:48 | 99 | 0d |  |  |  |
| 117 | 2.6 | **Implementación** |  | 1.62d | 2016-06-25 09:48 | 2016-06-27 16:48 | 57 | 0d |  | 18h | 1,407.33 |
| 118 | 2.7.1 | Evaluación del hosting |  | 1h | 2016-06-25 09:48 | 2016-06-25 10:48 | 116 | 0d | Administrador del proyecto; Analista | 2h | 189.73 |
| 119 | 2.7.2 | Implementar el sitio en el hosting |  | 4h | 2016-06-25 10:48 | 2016-06-25 16:48 | 118 | 0d | Administrador del proyecto; Programador | 8h | 651.2 |
| 120 | 2.7.3 | **Pruebas de caja Blanca** |  | 1d | 2016-06-25 16:48 | 2016-06-27 16:48 |  | 0d |  | 8h | 566.4 |
| 121 | 2.7.3.1 | Pruebas de rendimiento |  | 4h | 2016-06-25 16:48 | 2016-06-27 10:48 | 119 | 0d | Téster | 4h | 283.2 |
| 122 | 2.7.3.2 | Pruebas del sistema |  | 4h | 2016-06-27 10:48 | 2016-06-27 16:48 | 121 | 0d | Téster | 4h | 283.2 |
| 123 | 2.7 | **Cierre del proyecto** |  | 2.88d | 2016-06-27 16:48 | 2016-06-30 15:48 | 117 | 0d |  | 17h | 1,673.65 |
| 124 | 2.8.1 | Carta de aceptación |  | 1h | 2016-06-27 16:48 | 2016-06-27 17:48 | 122 | 0d | Administrador del proyecto | 1h | 98.45 |
| 125 | 2.8.2 | Acta de cierre de proyecto |  | 1h | 2016-06-27 17:48 | 2016-06-27 18:48 | 124 | 0d | Administrador del proyecto | 1h | 98.45 |
| 126 | 2.8.3 | Evaluación de desempeño |  | 2h | 2016-06-27 18:48 | 2016-06-28 10:48 | 125 | 0d | Administrador del proyecto | 2h | 196.9 |
| 127 | 2.8.4 | Junta de lecciones aprendidas |  | 4h | 2016-06-28 10:48 | 2016-06-28 16:48 | 126 | 0d | Administrador del proyecto | 4h | 393.8 |
| 128 | 2.8.5 | Revisión de adherencia de procesos |  | 6h | 2016-06-28 16:48 | 2016-06-29 12:48 | 127 | 0d |  |  |  |
| 129 | 2.8.6 | Liberación de recursos |  | 1h | 2016-06-29 12:48 | 2016-06-29 15:48 | 128 | 0d | Administrador del proyecto | 1h | 98.45 |
| 130 | 2.8.7 | Informe Final |  | 8h | 2016-06-29 15:48 | 2016-06-30 15:48 | 129 | 0d | Administrador del proyecto | 8h | 787.6 |

| ID | WBS | Task | Type | Duration | Start | Finish | Total slack | Constraint |
| --- | --- | --- | --- | --- | --- | --- | --- | --- |
| 132 | 2.8 | **Revisiones** |  | 19d | 2016-06-03 09:00 | 2016-06-24 19:00 | 0d |  |
| 133 | 2.8.1 | Revisiones 1 | manual | 1d | 2016-06-03 09:00 | 2016-06-03 19:00 |  | start no earlier than 2016-06-03 09:00 |
| 134 | 2.8.2 | Revisiones 2 | manual | 1d | 2016-06-10 09:00 | 2016-06-10 19:00 |  | start no earlier than 2016-06-10 09:00 |
| 135 | 2.8.3 | Revisiones 3 | manual | 1d | 2016-06-17 09:00 | 2016-06-17 19:00 |  | start no earlier than 2016-06-17 09:00 |
| 136 | 2.8.4 | Revisiones 4 | manual | 1d | 2016-06-24 09:00 | 2016-06-24 19:00 |  | start no earlier than 2016-06-24 09:00 |
